# lib_zdtm_sync - Detailed Plan

Schedule from Planner, 2007-01-10 to 2007-05-04.
ZSREP

## Calendars

- Default: Mon-Fri 08:00-12:00, 13:00-17:00; Sat-Sun off. Exceptions (off unless hours are given): 2007-02-04.

## Resources

| Resource | Group |
| --- | --- |
| Andrew De Ponte | Project Leader |
| Robert Wohleb | Developers |
| John McCullough | Developers |

## Schedule

| ID | WBS | Task | Start | Finish | Predecessors | Complete | Resources | Work |
| --- | --- | --- | --- | --- | --- | --- | --- | --- |
| 1 | 1 | Implement Cross-Platform Network Layer | 2007-01-10 | 2007-01-19 |  | 100% | Andrew De Ponte | 64h |
| 2 | 2 | **Zaurus Synchronization API** | 2007-01-22 | 2007-04-03 | 1 |  |  | 504h |
| 3 | 2.1 | Initialize Library | 2007-01-22 | 2007-01-23 |  | 100% | Andrew De Ponte | 16h |
| 4 | 2.2 | **Initiate Sync** | 2007-01-24 | 2007-01-29 | 3 | 100% |  | 24h |
| 5 | 2.2.1 | Connect to Zaurus | 2007-01-24 | 2007-01-29 |  | 100% | Andrew De Ponte [33%] | 8h |
| 6 | 2.2.2 | Handle Connection | 2007-01-24 | 2007-01-29 |  | 100% | Andrew De Ponte [33%] | 8h |
| 7 | 2.2.3 | Move Connect Into Initiate | 2007-01-24 | 2007-01-29 |  | 100% | Andrew De Ponte [33%] | 8h |
| 8 | 2.3 | **Obtain Device Information** | 2007-01-29 | 2007-02-01 | 4 |  |  | 24h |
| 9 | 2.3.1 | RIG Message | 2007-01-29 | 2007-01-31 |  | 100% | Andrew De Ponte [50%] | 8h |
| 10 | 2.3.2 | AIG Message | 2007-01-29 | 2007-01-31 |  | 100% | Andrew De Ponte [50%] | 8h |
| 11 | 2.3.3 | Stored Device Info Updating | 2007-01-31 | 2007-02-01 | 9, 10 | 100% | Andrew De Ponte | 8h |
| 12 | 2.4 | Check If Requires Authentication | 2007-02-01 | 2007-02-05 | 8 | 100% | Andrew De Ponte [50%] | 8h |
| 13 | 2.5 | **Authenticate Password** | 2007-02-05 | 2007-02-09 | 12 |  |  | 32h |
| 14 | 2.5.1 | AEX Message | 2007-02-05 | 2007-02-08 |  | 100% | Andrew De Ponte [33%] | 8h |
| 15 | 2.5.2 | RRL Message | 2007-02-05 | 2007-02-08 |  | 100% | Andrew De Ponte [33%] | 8h |
| 16 | 2.5.3 | ANG Message | 2007-02-05 | 2007-02-08 |  | 100% | Andrew De Ponte [33%] | 8h |
| 17 | 2.5.4 | Auth Passwd Using Messages | 2007-02-08 | 2007-02-09 | 14, 15, 16 | 100% | Andrew De Ponte | 8h |
| 18 | 2.6 | Check If Requires Full Sync | 2007-02-01 | 2007-02-05 | 8 | 100% | Andrew De Ponte [50%] | 8h |
| 19 | 2.7 | **Obtain Zaurus Sync State** | 2007-02-09 | 2007-02-14 | 13 |  |  | 24h |
| 20 | 2.7.1 | RMG Message | 2007-02-09 | 2007-02-13 |  | 100% | Andrew De Ponte [50%] | 8h |
| 21 | 2.7.2 | AMG Message | 2007-02-09 | 2007-02-13 |  | 100% | Andrew De Ponte [50%] | 8h |
| 22 | 2.7.3 | Obtain Sync State Using Messages | 2007-02-13 | 2007-02-14 | 20, 21 | 100% | Andrew De Ponte | 8h |
| 23 | 2.8 | **Obtain Last Time Synced** | 2007-02-14 | 2007-02-21 | 19 |  |  | 40h |
| 24 | 2.8.1 | RTG Message | 2007-02-14 | 2007-02-20 |  | 100% | Andrew De Ponte [50%] | 16h |
| 25 | 2.8.2 | ATG Message | 2007-02-14 | 2007-02-20 |  | 100% | Andrew De Ponte [50%] | 16h |
| 26 | 2.8.3 | Get Last Time Sync Using Messages | 2007-02-20 | 2007-02-21 | 25, 24 | 100% | Andrew De Ponte | 8h |

| ID | WBS | Task | Start | Finish | Predecessors | Complete | Constraint | Resources | Work |
| --- | --- | --- | --- | --- | --- | --- | --- | --- | --- |
| 27 | 2.9 | **Set Current Sync Time** | 2007-02-21 | 2007-02-23 | 23 |  |  |  | 16h |
| 28 | 2.9.1 | RTS Message | 2007-02-21 | 2007-02-22 |  | 100% |  | Andrew De Ponte | 8h |
| 29 | 2.9.2 | Set Cur Sync Time Using Messages | 2007-02-22 | 2007-02-23 | 28 | 100% |  | Andrew De Ponte | 8h |
| 30 | 2.10 | **Obtain Sync ID List** | 2007-02-23 | 2007-03-02 | 27 |  |  |  | 40h |
| 31 | 2.10.1 | RSY Message | 2007-02-23 | 2007-03-01 |  | 100% |  | Andrew De Ponte [50%] | 16h |
| 32 | 2.10.2 | ASY Message | 2007-02-23 | 2007-03-01 |  | 100% |  | Andrew De Ponte [50%] | 16h |
| 33 | 2.10.3 | Get Sync ID List Using Messages | 2007-03-01 | 2007-03-02 | 32, 31 | 100% |  | Andrew De Ponte | 8h |
| 34 | 2.11 | **Terminate Sync** | 2007-03-02 | 2007-03-09 | 30 | 100% |  |  | 32h |
| 35 | 2.11.1 | RDS Message | 2007-03-02 | 2007-03-07 |  | 100% |  | Andrew De Ponte [33%] | 8h |
| 36 | 2.11.2 | Terminate Sync Using Messages | 2007-03-07 | 2007-03-09 | 35 | 100% |  | Andrew De Ponte [50%] | 8h |
| 37 | 2.11.3 | Disconnect from Zaurus | 2007-03-02 | 2007-03-07 |  | 100% |  | Andrew De Ponte [33%] | 8h |
| 38 | 2.11.4 | Move Disconnect to Terminate | 2007-03-02 | 2007-03-07 |  | 100% |  | Andrew De Ponte [33%] | 8h |
| 39 | 2.12 | Finialize Library | 2007-03-07 | 2007-03-09 | 37 | 100% |  | Andrew De Ponte [50%] | 8h |
| 40 | 2.13 | **Obtain Sync Param Format** | 2007-03-12 | 2007-03-14 | 34 |  |  |  | 24h |
| 41 | 2.13.1 | RDI Message | 2007-03-12 | 2007-03-13 |  | 100% | start no earlier than 2007-03-11 | Andrew De Ponte [50%] | 8h |
| 42 | 2.13.2 | ADI Message | 2007-03-12 | 2007-03-13 |  | 100% | start no earlier than 2007-03-11 | Andrew De Ponte [50%] | 8h |
| 43 | 2.13.3 | Get Sync Param Format Using Messages | 2007-03-14 | 2007-03-14 | 42, 41 | 100% |  | Andrew De Ponte | 8h |
| 44 | 2.14 | **Obtain Item Functionality** | 2007-03-15 | 2007-03-27 | 40 |  |  |  | 64h |
| 45 | 2.14.1 | RDR Message | 2007-03-15 | 2007-03-16 |  | 100% | start no earlier than 2007-03-11 | Andrew De Ponte [50%] | 8h |
| 46 | 2.14.2 | ADR Message | 2007-03-15 | 2007-03-16 |  | 100% | start no earlier than 2007-03-11 | Andrew De Ponte [50%] | 8h |
| 47 | 2.14.3 | **Parse Item Data Into Approp Struct** | 2007-03-19 | 2007-03-21 | 46, 45 |  |  |  | 24h |
| 48 | 2.14.3.1 | Parse Todo Item Data | 2007-03-19 | 2007-03-19 |  | 100% |  | Andrew De Ponte | 8h |
| 49 | 2.14.3.2 | Parse Calendar Item Data | 2007-03-20 | 2007-03-20 | 48 | 100% |  | Andrew De Ponte | 8h |
| 50 | 2.14.3.3 | Parse Address Book Item Data | 2007-03-21 | 2007-03-21 | 49 | 100% |  | Andrew De Ponte | 8h |

| ID | WBS | Task | Start | Finish | Predecessors | Complete | Constraint | Resources | Work |
| --- | --- | --- | --- | --- | --- | --- | --- | --- | --- |
| 51 | 2.14.4 | **Get Item Functionality** | 2007-03-22 | 2007-03-27 | 47 |  |  |  | 24h |
| 52 | 2.14.4.1 | Get Todo Item | 2007-03-22 | 2007-03-27 |  | 100% |  | Andrew De Ponte [33%] | 8h |
| 53 | 2.14.4.2 | Get Calendar Item | 2007-03-22 | 2007-03-27 |  | 100% |  | Andrew De Ponte [33%] | 8h |
| 54 | 2.14.4.3 | Get Address Book Item | 2007-03-22 | 2007-03-27 |  | 100% |  | Andrew De Ponte [33%] | 8h |
| 55 | 2.15 | **Delete Item Functionality** | 2007-03-27 | 2007-03-29 | 44 |  |  |  | 16h |
| 56 | 2.15.1 | RDD Message | 2007-03-27 | 2007-03-29 |  | 100% | start no earlier than 2007-03-11 | Andrew De Ponte [50%] | 8h |
| 57 | 2.15.2 | Delete Item using Messages | 2007-03-27 | 2007-03-29 |  | 100% | start no earlier than 2007-03-11 | Andrew De Ponte [50%] | 8h |
| 58 | 2.16 | **Reset Sync Log** | 2007-03-12 | 2007-03-14 |  |  |  |  | 24h |
| 59 | 2.16.1 | RMS Message | 2007-03-12 | 2007-03-12 |  | 100% | start no earlier than 2007-03-11 | Robert Wohleb [50%]; John McCullough [50%] | 8h |
| 60 | 2.16.2 | RMS (Empty) Message | 2007-03-13 | 2007-03-13 | 59 | 100% | start no earlier than 2007-02-15 | Robert Wohleb [50%]; John McCullough [50%] | 8h |
| 61 | 2.16.3 | Reset Sync Log Using Messages | 2007-03-14 | 2007-03-14 | 59, 60 | 100% |  | Robert Wohleb | 8h |
| 62 | 2.17 | **Reset Item States to New** | 2007-03-15 | 2007-03-16 | 58 |  |  |  | 16h |
| 63 | 2.17.1 | RSS Message | 2007-03-15 | 2007-03-15 |  | 100% |  | Robert Wohleb | 8h |
| 64 | 2.17.2 | Reset Item States Using RSS Message | 2007-03-16 | 2007-03-16 | 63 | 100% |  | Robert Wohleb | 8h |
| 65 | 2.18 | **Add/Mod Item Functionality** | 2007-03-19 | 2007-04-03 | 62, 40 |  |  |  | 88h |
| 66 | 2.18.1 | RDW Message | 2007-03-19 | 2007-03-20 |  |  | start no earlier than 2007-03-11 | Robert Wohleb [50%] | 8h |
| 67 | 2.18.2 | ADW Message | 2007-03-19 | 2007-03-20 |  |  | start no earlier than 2007-03-11 | Robert Wohleb [50%] | 8h |
| 68 | 2.18.3 | **Build Item Data from Approp Struct** | 2007-03-21 | 2007-03-23 | 66, 67 |  |  |  | 24h |
| 69 | 2.18.3.1 | Build Todo Item Data | 2007-03-21 | 2007-03-21 |  |  |  | Robert Wohleb | 8h |
| 70 | 2.18.3.2 | Build Calendar Item Data | 2007-03-22 | 2007-03-22 | 69 |  |  | Robert Wohleb | 8h |
| 71 | 2.18.3.3 | Build Address Book Item Data | 2007-03-23 | 2007-03-23 | 70 |  |  | Robert Wohleb | 8h |
| 72 | 2.18.4 | **Add Item Functionality** | 2007-03-26 | 2007-04-03 | 68 |  |  |  | 24h |
| 73 | 2.18.4.1 | Add Todo Item | 2007-03-26 | 2007-04-03 |  |  |  | Robert Wohleb [16%] | 8h |
| 74 | 2.18.4.2 | Add Calendar Item | 2007-03-26 | 2007-04-03 |  |  |  | Robert Wohleb [16%] | 8h |
| 75 | 2.18.4.3 | Add Address Item | 2007-03-26 | 2007-04-03 |  |  |  | Robert Wohleb [16%] | 8h |

| ID | WBS | Task | Type | Duration | Start | Finish | Predecessors | Constraint | Resources | Work |
| --- | --- | --- | --- | --- | --- | --- | --- | --- | --- | --- |
| 76 | 2.18.5 | **Modify Item Functionality** |  |  | 2007-03-26 | 2007-04-03 | 68 |  |  | 24h |
| 77 | 2.18.5.1 | Mod Todo Items |  |  | 2007-03-26 | 2007-04-03 |  |  | Robert Wohleb [16%] | 8h |
| 78 | 2.18.5.2 | Mod Calendar Items |  |  | 2007-03-26 | 2007-04-02 |  |  | Robert Wohleb [18%] | 8h |
| 79 | 2.18.5.3 | Mod Address Items |  |  | 2007-03-26 | 2007-04-02 |  |  | Robert Wohleb [18%] | 8h |
| 80 | 3 | Code Freeze | milestone | 0d | 2007-04-24 | 2007-04-24 |  | must start on 2007-04-24 |  |  |
| 81 | 4 | Spring 2007 Semester Ends | milestone | 0d | 2007-05-04 | 2007-05-04 |  | must start on 2007-05-04 |  |  |
